# Salesforce_Phase3

How a schedule from MS Project changed from version to version. A marks actual dates.

## Version 1 (saved 2013-06-04)

Note of the change: plan

| ID | WBS | Task | Duration | Start | Finish | Predecessors | Total float | Constraint |
| --- | --- | --- | --- | --- | --- | --- | --- | --- |
| 1 | 1 | **TreMoCoi_Project_Phase1** | 6.5d? | 2013-06-03 | 2013-06-11 |  | 0d |  |
| 2 |  | Study about Foundation front-end framework | 1d | 2013-06-03 | 2013-06-03 |  | 0d | start no earlier than 2013-06-03 |
| 3 |  | Analysis and summary the business | 2d | 2013-06-03 | 2013-06-04 |  | 4.5d | start no earlier than 2013-06-03 |
| 4 |  | Home: Header, Sidebar, Footer (normal: the last section) | 0.5d | 2013-06-04 | 2013-06-04 | 2 | 4.5d |  |
| 5 |  | Home: Center, Footer (content section) | 1.5d | 2013-06-04 | 2013-06-05 | 2 | 0d |  |
| 6 |  | News: by categories | 1d | 2013-06-04 | 2013-06-05 | 4 | 4.5d |  |
| 7 |  | Login, Registration | 1d? | 2013-06-05 | 2013-06-06 | 5 | 0d |  |
| 8 |  | Adoption form | 2d | 2013-06-05 | 2013-06-06 | 3 | 4.5d |  |
| 9 |  | Orphans information | 1.5d | 2013-06-05 | 2013-06-06 | 6 | 4.5d |  |
| 10 |  | Social Network: Share, Like | 0.5d | 2013-06-06 | 2013-06-06 | 7 | 4.5d |  |
| 12 |  | Test and Fixbug | 3d | 2013-06-06 | 2013-06-11 | 7 | 0d |  |
| 14 | 2 | **TreMoCoi_Project_Phase2** | 5d? | 2013-06-11 | 2013-06-18 |  | 0d |  |
| 15 |  | Merge new design | 2d | 2013-06-11 | 2013-06-13 | 12 | 0d |  |
| 16 |  | Test and Fixbug | 1d? | 2013-06-13 | 2013-06-14 | 15 | 0d |  |
| 17 |  | Merge to Production | 2d | 2013-06-14 | 2013-06-18 | 16 | 0d |  |
| 20 | 3 | **TreMoCoi_Project_Phase3** | 31.5d? | 2013-05-13 | 2013-06-25 |  | 0d |  |
| 21 |  | Mobile theme | 2d | 2013-06-18 | 2013-06-20 | 17 | 3d |  |
| 22 |  | Form Tuyen dung | 1.5d | 2013-06-18 | 2013-06-19 | 17 | 3.5d |  |
| 23 |  | Import from excel to table Tre mo coi | 2d | 2013-06-18 | 2013-06-20 | 17 | 0d |  |
| 25 |  | Test and Fixbug | 1d? | 2013-06-20 | 2013-06-21 | 23 | 0d |  |
| 26 |  | Merge to Production | 2d | 2013-06-21 | 2013-06-25 | 25 | 0d |  |
| 46 |  | Note: Resource name by Newbie in WP | 1d? | 2013-05-13 | 2013-05-13 |  | 30.5d |  |

## Version 2 (saved 2013-06-04)

Note of the change: new

Last finish stays 2013-06-25.

Added:

| ID | Task | Duration | Start | Finish | Predecessors | Resources |
| --- | --- | --- | --- | --- | --- | --- |
| 24 | Happy ending | 0.5d | 2013-06-20 | 2013-06-20 | 22 | Long & Chi (content) |
| 25 | User's trace | 0.5d | 2013-06-20 | 2013-06-20 | 23 | Phi & Vinh |
| 26 | User's children | 0.5d | 2013-06-20 | 2013-06-20 | 21 | Hien & Hieu |
| 35 | Children's history | 1d? | 2013-05-13 | 2013-05-13 |  |  |

Changed:

| ID | Task | Start | Duration | Predecessors |
| --- | --- | --- | --- | --- |
| 20 | **TreMoCoi_Project_Phase3** |  | 31.5d? → 32d? |  |
| 28 | Test and Fixbug | 2013-06-20 → 2013-06-21 (+1d) |  | 23 → 26, 23 |
| 29 | Merge to Production | 2013-06-21 → 2013-06-24 (+3d) |  |  |

## Version 3 (saved 2013-06-05)

Last finish 2013-06-25 → 2013-06-27 (+2d).

Added:

| ID | Task | Duration | Start | Finish |
| --- | --- | --- | --- | --- |
| 34 | **Future functions** | 1d? | 2013-05-13 | 2013-05-13 |

Changed:

| ID | Task | Start | Finish | Duration | Total float | Predecessors |
| --- | --- | --- | --- | --- | --- | --- |
| 1 | **TreMoCoi_Project_Phase1** |  | 2013-06-11 → 2013-06-13 (+2d) | 6.5d? → 8.5d |  |  |
| 3 | Analysis and summary the business |  | 2013-06-04 → 2013-06-05 (+1d) | 2d → 3d | 4.5d → 12d |  |
| 4 | Home: Header, Sidebar, Footer (normal: the last section) |  | 2013-06-04 → 2013-06-05 (+1d) | 0.5d → 1.5d | 4.5d → 13.5d |  |
| 6 | News: by categories | 2013-06-04 → 2013-06-05 (+1d) | 2013-06-05 → 2013-06-06 (+1d) |  | 4.5d → 13.5d |  |
| 7 | Login, Registration |  | 2013-06-06 → 2013-06-07 (+1d) | 1d? → 2d |  |  |
| 8 | Adoption form | 2013-06-05 → 2013-06-06 (+1d) | 2013-06-06 → 2013-06-10 (+4d) | 2d → 2.5d | 4.5d → 13.5d |  |
| 9 | Orphans information | 2013-06-05 → 2013-06-06 (+1d) | 2013-06-06 → 2013-06-10 (+4d) | 1.5d → 2d | 4.5d → 13.5d |  |
| 10 | Social Network: Share, Like | 2013-06-06 → 2013-06-07 (+1d) | 2013-06-06 → 2013-06-10 (+4d) | 0.5d → 1d | 4.5d → 0d |  |
| 12 | Test and Fixbug | 2013-06-06 → 2013-06-10 (+4d) | 2013-06-11 → 2013-06-13 (+2d) |  |  | 7 → 10, 7 |
| 14 | **TreMoCoi_Project_Phase2** | 2013-06-11 → 2013-06-13 (+2d) | 2013-06-18 → 2013-06-20 (+2d) |  |  |  |
| 15 | Merge new design | 2013-06-11 → 2013-06-13 (+2d) | 2013-06-13 → 2013-06-17 (+4d) |  |  |  |
| 16 | Test and Fixbug | 2013-06-13 → 2013-06-17 (+4d) | 2013-06-14 → 2013-06-18 (+4d) |  |  |  |
| 17 | Merge to Production | 2013-06-14 → 2013-06-18 (+4d) | 2013-06-18 → 2013-06-20 (+2d) |  |  |  |
| 20 | **TreMoCoi_Project_Phase3** | 2013-05-13 → 2013-06-20 (+38d) | 2013-06-25 → 2013-06-27 (+2d) | 32d? → 5.5d? |  |  |
| 21 | Mobile theme | 2013-06-18 → 2013-06-20 (+2d) | 2013-06-20 → 2013-06-24 (+4d) |  |  |  |
| 22 | Form Tuyen dung | 2013-06-18 → 2013-06-20 (+2d) | 2013-06-19 → 2013-06-21 (+2d) |  |  |  |
| 23 | Import from excel to table Tre mo coi | 2013-06-18 → 2013-06-20 (+2d) | 2013-06-20 → 2013-06-24 (+4d) |  |  |  |
| 24 | Happy ending | 2013-06-20 → 2013-06-24 (+4d) | 2013-06-20 → 2013-06-24 (+4d) |  |  |  |
| 25 | User's trace | 2013-06-20 → 2013-06-24 (+4d) | 2013-06-20 → 2013-06-24 (+4d) |  |  |  |
| 26 | User's children | 2013-06-20 → 2013-06-24 (+4d) | 2013-06-20 → 2013-06-24 (+4d) |  |  |  |
| 28 | Test and Fixbug | 2013-06-21 → 2013-06-25 (+4d) | 2013-06-21 → 2013-06-25 (+4d) |  |  |  |
| 29 | Merge to Production | 2013-06-24 → 2013-06-26 (+2d) | 2013-06-25 → 2013-06-27 (+2d) |  |  |  |

## Version 4 (saved 2013-06-06)

Note of the change: Merge branch 'staging' of https://github.com/dohaibac/Tre_mo_coi into staging

Last finish stays 2013-06-27.

Added:

| ID | Task | Duration | Start | Finish | Predecessors | Resources |
| --- | --- | --- | --- | --- | --- | --- |
| 26 | Lien he | 1d? | 2013-06-24 | 2013-06-24 | 21 | Ha & Long |

Changed:

| ID | Task | Predecessors |
| --- | --- | --- |
| 28 | Test and Fixbug | 25, 22 → 26, 25, 22 |

## Version 5 (saved 2013-06-06)

Last finish stays 2013-06-27.

Added:

| ID | Task | Duration | Start | Finish |
| --- | --- | --- | --- | --- |
| 36 | Upgrade "Tim nguoi than" | 1d? | 2013-05-13 | 2013-05-13 |
| 37 | Upgrade "Viec lam cho em" | 1d? | 2013-05-13 | 2013-05-13 |

## Version 6 (saved 2013-06-07)

Note of the change: new

Last finish stays 2013-06-27.

Changed:

| ID | Task | Start | Finish | Duration | Total float | Predecessors |
| --- | --- | --- | --- | --- | --- | --- |
| 21 | Lien he | 2013-06-24 → 2013-06-20 (-4d) | 2013-06-24 → 2013-06-21 (-3d) | 1d? → 1d |  | 26 → 17 |
| 23 | Happy ending | 2013-06-24 → 2013-06-21 (-3d) | 2013-06-24 → 2013-06-21 (-3d) |  | 3.5d → 4d | 26 → 21 |
| 26 | Form Tuyen dung | 2013-06-20 → 2013-06-21 (+1d) | 2013-06-21 → 2013-06-24 (+3d) |  |  | 17 → 21 |
| 28 | Test and Fixbug |  |  |  |  | 21, 25, 22 → 26, 25, 22 |

## Version 7 (saved 2013-06-13)

Last finish stays 2013-06-27. Complete tasks 0 → 5.

Changed:

| ID | Task | Start | Finish | Duration | Complete | Total float | Other |
| --- | --- | --- | --- | --- | --- | --- | --- |
| 1 | **TreMoCoi_Project_Phase1** | 2013-06-03 A |  |  | 0% → 80% | 0d → 10.5d |  |
| 2 | Study about Foundation front-end framework | 2013-06-03 A | 2013-06-03 A |  | 0% → 100% | 0d → none |  |
| 3 | Analysis and summary the business | 2013-06-03 A | 2013-06-05 A |  | 0% → 100% | 12d → none |  |
| 4 | Home: Header, Sidebar, Footer (normal: the last section) | 2013-06-04 A |  |  | 0% → 90% | 13.5d → 16.5d |  |
| 5 | Home: Center, Footer (content section) | 2013-06-04 A |  |  | 0% → 90% | 0d → 16.5d |  |
| 6 | News: by categories | 2013-06-05 A | 2013-06-06 A |  | 0% → 100% | 13.5d → none |  |
| 7 | Login, Registration | 2013-06-05 A | 2013-06-07 A |  | 0% → 100% | 0d → none |  |
| 8 | Adoption form and cronjob | 2013-06-06 A | 2013-06-10 A | 2.5d → 3d | 0% → 100% | 13.5d → none | was named Adoption form |
| 9 | Orphans information | 2013-06-06 A |  |  | 0% → 80% |  |  |
| 10 | Social Network: Share, Like | 2013-06-07 A |  |  | 0% → 90% | 0d → 1.9d |  |
| 14 | **TreMoCoi_Project_Phase2** | 2013-06-13 A |  |  | 0% → 38% |  |  |
| 15 | Merge new design | 2013-06-13 A |  |  | 0% → 95% |  |  |

## Version 8 (saved 2013-06-13)

Last finish stays 2013-06-27. Complete tasks 5 → 6.

Changed:

| ID | Task | Start | Finish | Complete | Total float |
| --- | --- | --- | --- | --- | --- |
| 19 | **TreMoCoi_Project_Phase3** | 2013-06-20 A |  | 0% → 9% |  |
| 21 | Lien he | 2013-06-20 A | 2013-06-21 A | 0% → 100% | 0d → none |

## Version 9 (saved 2013-06-16)

Note of the change: Merge branch 'staging' of https://github.com/dohaibac/Tre_mo_coi

Last finish stays 2013-06-27. Complete tasks 6 → 12.

Changed:

| ID | Task | Start | Finish | Duration | Complete | Total float | Other |
| --- | --- | --- | --- | --- | --- | --- | --- |
| 1 | **TreMoCoi_Project_Phase1** |  | 2013-06-13 A |  | 80% → 100% | 10.5d → none |  |
| 4 | Home: Header, Sidebar, Footer (normal: the last section) |  | 2013-06-05 A |  | 90% → 100% | 16.5d → none |  |
| 5 | Home: Center, Footer (content section) |  | 2013-06-05 A |  | 90% → 100% | 16.5d → none |  |
| 9 | Orphans information |  | 2013-06-10 A |  | 80% → 100% | 13.5d → none |  |
| 10 | Social Network: Share, Like |  | 2013-06-10 A |  | 90% → 100% | 1.9d → none |  |
| 12 | Test and Fixbug | 2013-06-10 A | 2013-06-13 A |  | 0% → 100% | 1.9d → none |  |
| 14 | **TreMoCoi_Project_Phase2** |  |  |  | 38% → 40% | 3d → 2.5d |  |
| 15 | Merge new design |  | 2013-06-17 A |  | 95% → 100% | 3d → none |  |
| 19 | **TreMoCoi_Project_Phase3** |  |  | 5.5d? → 5d? | 9% → 10% |  |  |
| 26 | Tim nguoi than |  |  | 1.5d → 1d |  |  | was named Form Tuyen dung |
| 28 | Test and Fixbug | 2013-06-25 → 2013-06-24 (-1d) |  |  |  |  |  |
| 29 | Merge to Production | 2013-06-26 → 2013-06-25 (-1d) |  |  |  |  |  |
